# 附件：项目实施计划

Schedule from MS Project, 2018-01-02 to 2018-09-19.
IFS China

## Calendars

- 标准: Mon-Fri 08:00-12:00, 13:00-17:00; Sat-Sun off. Exceptions (off unless hours are given): 2018-02-13 to 2018-03-01 (春节), 2018-04-05 to 2018-04-07 (清明节), 2018-04-29 to 2018-05-01 (五一).

## Resources

| Resource |
| --- |
| IFS 技术顾问-DBA |
| IFS 应用顾问-分销顾问 |
| IFS 应用顾问－制造顾问 |
| IFS 应用顾问－财务顾问 |
| IFS 应用顾问－财务 |
| 制造顾问 |
| IFS应用顾问－财务 |
| IFS 应用顾问-分销 |
| IFS 应用顾问（财务 |
| IFS应用顾问 |
| IFS 应用顾问- |
| IFS 应用顾问- 人力资源 |
| IFS 应用顾问-人力资源 |
| IFS 应用顾问- 设备管理 |
| IFS 应用顾问- 设备管理 |
| IFS 应用顾问-设备管理 |
| 分销顾问 |
| 财务顾问 |
| 销售管理 |
| 销售顾问 |
| 顾问 |
| 技术顾问 |
| 应用顾问 |
| 生产顾问 |
| 移动技术顾问 |
| 美工 |
| 生产 |
| ERP |
| 二维码 |
| JAVA |
| 蓝牙 |
| WEB |

## Schedule

| ID | WBS | Task | Duration | Start | Finish | Predecessors | Baseline start | Baseline finish | Baseline duration | Total slack | Free slack | Constraint | Resources | Work | Text1 | IFS人天 | Text2 | Text3 |
| --- | --- | --- | --- | --- | --- | --- | --- | --- | --- | --- | --- | --- | --- | --- | --- | --- | --- | --- |
| 1 | 1 | M0-协议签定 | 1d | 2018-01-02 | 2018-01-02 |  | 2011-04-28 | 2011-04-28 | 1d | 0d | 161d | start no earlier than 2018-01-02 |  |  | 客户解决方案战略（CSS）阶段结束 | 293 |  |  |
| 2 | 1 | **M1-项目启动** | 3d | 2018-01-02 | 2018-01-04 |  | 2000-02-01 | 2000-02-04 | 4d | -356d | 0d |  |  |  | 项目实施阶段－－项目准备 |  |  |  |
| 3 | 1.1 | 建立项目组织 | 1d | 2018-01-02 | 2018-01-02 |  | 2000-02-01 | 2000-02-01 | 0.5d | -334d | 0d |  |  |  | 项目实施阶段－－项目准备 |  | 项目PQS文件 | 指导委员会、双方项目经理 |
| 4 | 1.2 | 制定项目计划 | 1d | 2018-01-03 | 2018-01-03 | 3 | 2000-02-01 | 2000-02-02 | 1.5d | -334d | 0d |  |  |  | 项目实施阶段－－项目准备 |  | 项目主计划 | 指导委员会、双方项目经理 |
| 5 | 1.3 | M1 - 项目启动会 | 1d | 2018-01-04 | 2018-01-04 | 4 | 2000-02-04 | 2000-02-04 | 1d | -334d | 0d |  |  |  | 项目实施阶段－－项目准备 |  | 项目启动模板 | 双方项目经理 |
| 6 | 2 | **M2-项目基础设施** | 4d | 2018-01-02 | 2018-01-05 |  | 2000-02-01 | 2000-02-09 | 7d | -356d | 0d |  |  |  | 项目实施阶段－－项目准备 |  |  |  |
| 7 | 2.1 | 准备项目实施场所 | 2d | 2018-01-02 | 2018-01-03 |  | 2000-02-01 | 2000-02-02 | 2d | -302d | 0d | start no earlier than 2018-01-02 |  |  | 项目实施阶段－－项目准备 |  |  |  |
| 8 | 2.2 | 硬件及网络设置 | 2d | 2018-01-04 | 2018-01-05 | 7 | 2000-02-03 | 2000-02-09 | 5d | 0d |  |  |  |  | 项目实施阶段－－项目准备 |  |  |  |
| 9 | 4 | **M3-开发环境安装调试** | 3d | 2018-01-08 | 2018-01-10 |  | 2011-05-09 | 2011-06-24 | 35d? | -356d | 0d |  |  |  | 项目实施阶段－－项目准备 |  | 安装报告 | 客户项目经理 |
| 10 | 4.1 | 开发环境安装准备 | 2d | 2018-01-08 | 2018-01-09 | 8 | 2011-05-09 | 2011-05-09 | 1d | -300d | 0d |  |  |  | 项目实施阶段－－项目准备 |  |  |  |
| 11 | 4.2 | 开发环境操作系统安装调试 | 1d | 2018-01-10 | 2018-01-10 | 10 | 2011-05-10 | 2011-05-10 | 1d | -300d | 0d |  |  |  | 项目实施阶段－－项目准备 |  |  |  |
| 12 | 5 | **MA－开发实施** | 170d? | 2018-01-02 | 2018-09-19 |  | 2011-05-10 | 2012-01-02 | 170d | -353d | 0d |  |  | 1280h | 项目实施阶段－－项目实施 | 291 |  |  |
| 13 | 3.3 | **MA1-业务流程分析** | 5d | 2018-01-05 | 2018-01-11 |  | 2000-02-10 | 2000-02-18 | 6.5d | 162d |  |  |  |  | 项目实施阶段－－调研分析 | 45 | 业务调研计划,业务调研问卷 | 项目经理 |
| 14 | 5.1.1 | 整体需求分析与确认 | 5d | 2018-01-05 | 2018-01-11 | 5 | 2011-05-18 | 2011-05-19 | 2d | 149d |  |  |  |  | 项目实施阶段－－调研分析 |  |  |  |
| 15 | 3.1 | **MA2-建设方案** | 12d? | 2018-01-02 | 2018-01-17 |  | 2000-02-01 | 2000-02-11 | 8.5d | -353d | 0d |  |  | 56h | 项目实施阶段－－关键用户培训 | 35 | 培训电子学习材料,培训测试 | 客户项目经理 |
| 16 | 5.2.1 | 页面风格设计 | 7d | 2018-01-05 | 2018-01-15 | 5 | 2011-05-30 | 2011-05-31 | 2d | 145d | 0d |  | 美工 | 56h | 项目实施阶段－－关键用户培训 |  |  |  |
| 17 | 5.2.2 | 页面风格确认 | 2d | 2018-01-16 | 2018-01-17 | 16 | 2011-06-01 | 2011-06-01 | 1d | 145d |  |  |  |  | 项目实施阶段－－关键用户培训 |  |  |  |
| 18 | 5.2.3 | 电量及负荷指标 | 2d | 2018-01-05 | 2018-01-08 | 5 | 2011-06-06 | 2011-06-10 | 5d | -343d | 0d |  |  |  | 项目实施阶段－－关键用户培训 |  |  |  |
| 19 | 5.2.4 | ERP生产应用 | 3d | 2018-01-09 | 2018-01-11 | 18 | 2011-06-07 | 2011-06-10 | 4d | -343d | 0d |  |  |  | 项目实施阶段－－关键用户培训 |  |  |  |
| 20 | 5.2.5 | ERP审批 | 1d? | 2018-01-02 | 2018-01-02 |  | 2011-06-13 | 2011-06-16 | 4d | 156d |  |  |  |  | 项目实施阶段－－关键用户培训 |  |  |  |
| 21 | 5.2.6 | 新闻公告 | 1d? | 2018-01-02 | 2018-01-02 |  |  |  |  | 156d |  |  |  |  |  |  |  |  |
| 22 | 5.2.7 | 蓝牙设施读写 | 3d | 2018-01-12 | 2018-01-16 | 19 |  |  |  | 146d |  |  |  |  |  |  |  |  |
| 23 | 5.3 | **MA3-业务解决方案讨论和确定（概要设计）** | 21d? | 2018-01-02 | 2018-01-30 |  | 2011-06-07 | 2011-07-08 | 24d | -351d | 0d |  |  | 128h | 项目实施阶段－－功能实现 | 38 | 业务流程文档 | 核心用户、客户项目经理 |
| 24 | 5.3.1 | 电量及负荷指标 | 2d | 2018-01-09 | 2018-01-10 | 18 | 2011-06-07 | 2011-06-13 | 5d | -300d | 0d |  | 生产 | 16h | 项目实施阶段－－功能实现 |  |  |  |
| 25 | 5.3.2 | ERP日志 | 2d | 2018-01-12 | 2018-01-15 | 19 | 2011-06-13 | 2011-06-17 | 5d | 160d |  |  | ERP | 16h | 项目实施阶段－－功能实现 |  |  |  |
| 26 | 5.3.3 | ERP缺陷（问题） | 2d | 2018-01-12 | 2018-01-15 | 19 | 2011-06-17 | 2011-06-23 | 5d | -343d | 0d |  | ERP | 16h | 项目实施阶段－－功能实现 |  |  |  |
| 27 | 5.3.4 | 设备信息 | 1d | 2018-01-16 | 2018-01-16 | 26 | 2011-06-24 | 2011-06-29 | 4d | 136d | 0d |  | 二维码 | 8h | 项目实施阶段－－功能实现 |  |  |  |
| 28 | 5.3.5 | 任务管理 | 2d | 2018-01-17 | 2018-01-18 | 27 |  |  |  | 136d | 0d |  | WEB | 16h |  |  |  |  |
| 29 | 5.3.6 | 生产短信 | 2d | 2018-01-19 | 2018-01-22 | 28 |  |  |  | 136d | 0d |  | WEB | 16h |  |  |  |  |
| 30 | 5.3.7 | ERP审批 | 1d? | 2018-01-02 | 2018-01-02 |  |  |  |  | 0d | 161d |  |  |  |  |  |  |  |
| 31 | 5.3.8 | 新闻公告 | 1d? | 2018-01-02 | 2018-01-02 |  |  |  |  | 0d | 161d |  |  |  |  |  |  |  |
| 32 | 5.3.9 | 现场巡查 | 3d | 2018-01-23 | 2018-01-25 | 29 | 2011-06-20 | 2011-06-23 | 4d | 136d | 0d |  | 蓝牙 | 24h |  |  |  |  |
| 33 | 5.3.10 | 考勤管理 | 2d | 2018-01-26 | 2018-01-29 | 32 | 2011-06-30 | 2011-06-30 | 1d | 136d | 0d |  | 蓝牙 | 16h |  |  |  |  |
| 34 | 5.3.11 | 负荷预测 | 1d? | 2018-01-02 | 2018-01-02 |  |  |  |  | 0d | 161d |  |  |  |  |  |  |  |
| 35 | 5.3.12 | 电网信息 | 1d? | 2018-01-02 | 2018-01-02 |  |  |  |  | 0d | 161d |  |  |  |  |  |  |  |
| 36 | 5.3.13 | 解决方案确认 | 1d | 2018-01-30 | 2018-01-30 | 33 | 2011-07-01 | 2011-07-01 | 1d | 136d |  |  |  |  | 项目实施阶段－－功能实现 |  |  |  |

Notes:
- 4: 细化项目计划，制定分module的项目计划，将资源分配到计划中
- 13: 由于IFS7对现有业务流程已有一定了解，总天数为50天应足够
- 14: 在分析时要注意电子商务接口的实现

| ID | WBS | Task | Type | Duration | Start | Finish | Predecessors | Baseline start | Baseline finish | Baseline duration | Total slack | Free slack | Constraint | Deadline | Resources | Work | IFS人天 | Text1 | Text2 | Text3 |
| --- | --- | --- | --- | --- | --- | --- | --- | --- | --- | --- | --- | --- | --- | --- | --- | --- | --- | --- | --- | --- |
| 37 | 5.4 | **MA4-客户化开发** |  | 72d | 2018-01-11 | 2018-05-15 |  |  |  |  | -356d | 0d |  |  |  | 1096h | 310 |  |  |  |
| 38 | 5.4.1 | 生产管理首页 |  | 12d | 2018-01-11 | 2018-01-26 | 24, 11 |  |  |  | -356d | 0d |  |  |  |  |  |  |  |  |
| 39 | 5.4.2 | 电量及负荷指标 |  | 22d | 2018-01-11 | 2018-02-09 | 24, 11 | 2011-06-07 | 2011-06-13 | 5d | 0d |  |  |  | 生产 | 176h |  | 项目实施阶段－－功能实现 |  |  |
| 40 | 5.4.3 | ERP日志 |  | 15d | 2018-01-29 | 2018-03-07 | 38 | 2011-06-13 | 2011-06-17 | 5d | -356d | 0d |  |  | ERP | 120h |  | 项目实施阶段－－功能实现 |  |  |
| 41 | 5.4.4 | ERP缺陷（问题） |  | 20d | 2018-01-16 | 2018-02-12 | 26 | 2011-06-17 | 2011-06-23 | 5d | -307d | 0d |  |  | ERP | 160h |  | 项目实施阶段－－功能实现 |  |  |
| 42 | 5.4.5 | 设备信息 |  | 6d | 2018-03-08 | 2018-03-15 | 40 | 2011-06-24 | 2011-06-29 | 4d | -356d | 0d |  |  | 二维码 | 48h |  | 项目实施阶段－－功能实现 |  |  |
| 43 | 5.4.6 | 任务管理 |  | 24d | 2018-03-16 | 2018-04-20 | 42 |  |  |  | -356d | 0d |  |  | WEB | 192h |  |  |  |  |
| 44 | 5.4.7 | 生产短信 |  | 15d | 2018-04-23 | 2018-05-15 | 43 |  |  |  | -356d | 0d |  |  | WEB | 120h |  |  |  |  |
| 45 | 5.4.8 | 现场巡查 |  | 20d | 2018-03-16 | 2018-04-16 | 42 | 2011-06-20 | 2011-06-23 | 4d | -352d | 0d |  |  | 蓝牙 | 160h |  |  |  |  |
| 46 | 5.4.9 | 考勤管理 |  | 15d | 2018-04-17 | 2018-05-09 | 45 | 2011-06-30 | 2011-06-30 | 1d | -352d | 0d |  |  | 蓝牙 | 120h |  |  |  |  |
| 47 | 3.5 | MA5-安装调试（ＡＳＴ） |  | 10d | 2018-05-16 | 2018-05-29 | 37 | 2011-07-11 | 2011-08-05 | 20d | -356d | 0d |  |  |  |  | 46 | 项目实施阶段－－功能实现 |  |  |
| 48 | 3.2 | **MA6-数据准备及设备采购** |  | 30d | 2018-04-17 | 2018-05-30 |  | 2011-06-20 | 2011-07-29 | 30d | 80d |  |  |  |  |  | 31 | 项目实施阶段－－功能实现 | 基数数据导入模板 | 核心用户、客户项目经理 |
| 49 | 3.2.1 | 主数据编码确定 |  | 10d | 2018-04-17 | 2018-05-02 | 45 | 2011-06-20 | 2011-07-08 | 15d | 85d | 0d |  |  |  |  |  | 项目实施阶段－－功能实现 |  |  |
| 50 | 3.2.2 | 数据准备 |  | 15d | 2018-05-03 | 2018-05-23 | 49 | 2011-07-11 | 2011-07-29 | 15d | 85d |  |  |  |  |  | 25 | 项目实施阶段－－功能实现 |  |  |
| 51 | 5.6.3 | 设备采购 |  | 10d | 2018-04-17 | 2018-05-02 | 45 |  |  |  | 80d | 0d |  |  |  |  |  |  |  |  |
| 52 | 5.6.4 | 设备安装调试 |  | 20d | 2018-05-03 | 2018-05-30 | 51 |  |  |  | 80d |  |  |  |  |  |  |  |  |  |
| 53 | 3.7 | **MA7-系统联调** |  | 18d | 2018-05-30 | 2018-06-22 |  | 2011-07-11 | 2011-08-19 | 30d | -356d | 0d |  |  |  |  | 41 | 项目实施阶段－－功能实现 |  |  |
| 54 | 5.7.1 | 正式库环境准备的安装 |  | 5d | 2018-05-30 | 2018-06-05 | 47 |  |  |  | -356d | 0d | start no earlier than 2016-10-24 |  |  |  |  |  |  |  |
| 55 | 5.7.2 | IFS应用系统安装及管理员培训调试 |  | 3d | 2018-06-06 | 2018-06-08 | 54 | 2011-06-21 | 2011-06-24 | 4d | -356d | 0d | start no earlier than 2010-12-08 |  |  |  |  | 项目实施阶段－－项目准备 |  |  |
| 56 | 3.7.1 | 权限分配 |  | 5d | 2018-06-11 | 2018-06-15 | 55 | 2011-07-11 | 2011-07-15 | 5d | -356d | 0d |  |  |  |  |  | 项目实施阶段－－功能实现 | 权限模板 | 项目经理 |
| 57 | 5.7.4 | 主数据设置 |  | 5d | 2018-06-11 | 2018-06-15 | 55 | 2011-07-11 | 2011-07-15 | 5d | -351d | 0d |  |  |  |  |  | 项目实施阶段－－功能实现 |  | 核心小组、项目经理 |
| 58 | 3.7.2 | 最终用户培训 |  | 5d | 2018-06-18 | 2018-06-22 | 56 | 2011-07-18 | 2011-08-05 | 15d | -356d | 0d |  |  |  |  |  | 项目实施阶段－－功能实现 | 用户操作手册 |  |
| 59 | 3.11 | **MA8-上线及维护** |  | 3d | 2018-06-25 | 2018-06-27 |  | 2000-02-01 | 2000-02-01 | 1d | -356d | 0d |  | 2017-01-20 |  |  | 65 | 项目实施阶段－－上线准备 | 上线计划、上线检查清单 | 项目经理、指导委员会 |
| 60 | 5.8.1 | 上线策略、数据准备 |  | 3d | 2018-06-25 | 2018-06-27 | 53 |  |  |  | -356d | 0d |  |  |  |  |  |  |  |  |
| 61 | 5.8.2 | 主体功能模块上线试运行 | milestone | 0d | 2018-06-27 | 2018-06-27 | 60 |  |  |  | -356d | 0d |  |  |  |  |  |  |  |  |
| 62 | 5.9 | MA9-项目验收 |  | 60d | 2018-06-28 | 2018-09-19 | 61 |  |  |  | 0d |  |  |  |  |  |  |  |  |  |
